# caarray_2_2_1

Schedule from MS Project, 2008-10-13 to 2009-06-30, A marks actual dates.
Sony Electronics, Inc.

## Calendars

- Standard: Mon-Fri 08:00-12:00, 13:00-17:00; Sat-Sun off.

## Resources

| Resource |
| --- |
| mshestopalov |
| misquitt |
| reddya2 |
| khannave |
| qabox |
| stagebox |
| liujj |

## Schedule

| ID | WBS | Task | Type | Duration | Start | Finish | Predecessors | Complete | Remaining | Total slack | Free slack | Constraint | Resources | Work | Actual work |
| --- | --- | --- | --- | --- | --- | --- | --- | --- | --- | --- | --- | --- | --- | --- | --- |
| 1 | 1 | **caArray 2.2.1** |  | 187d? | 2008-10-13 A | 2009-06-30 |  | 23% | 144.54d? | 0d |  |  |  | 648h | 80h |
| 2 | 1.1 | **Construction Beta** |  | 13d | 2009-02-16 A | 2009-03-04 A |  | 100% |  |  |  |  |  | 80h | 80h |
| 3 | 1.1.1 | **Implementation** |  | 5d | 2009-02-19 A | 2009-02-25 A |  | 100% |  |  |  |  |  | 40h | 40h |
| 4 | 1.1.1.1 | Implement Beta items |  | 4d | 2009-02-19 A | 2009-02-24 A |  | 100% |  |  |  | finish no earlier than 2009-02-24 | mshestopalov | 32h | 32h |
| 5 | 1.1.1.2 | Verify Beta items on DEV tier |  | 1d | 2009-02-25 A | 2009-02-25 A | 4 | 100% |  |  |  |  | mshestopalov | 8h | 8h |
| 6 | 1.1.1.3 | Milestone: Deploy Beta to QA-VM | milestone | 0d | 2009-02-25 A | 2009-02-25 A | 5 | 100% |  |  |  |  |  |  |  |
| 7 | 1.1.2 | **IQA Testing** |  | 13d | 2009-02-16 A | 2009-03-04 A |  | 100% |  |  |  |  |  | 40h | 40h |
| 8 | 1.1.2.1 | UAT new items on QA |  | 5d | 2009-02-26 A | 2009-03-04 A | 6 | 100% |  |  |  |  | liujj | 40h | 40h |
| 9 | 1.1.2.2 | Milestone: Complete Beta Testing | milestone | 0d | 2009-02-16 A | 2009-02-16 A |  | 100% |  |  |  |  |  |  |  |
| 10 | 1.1.3 | Milestone: Complete Beta Construction | milestone | 0d | 2009-02-25 A | 2009-02-25 A | 6, 9 | 100% |  |  |  |  |  |  |  |
| 11 | 1.2 | **Construction RC1** |  | 29d? | 2009-03-02 | 2009-04-09 |  |  |  | 38d |  |  |  | 192h |  |
| 12 | 1.2.1 | **Implementation** |  | 16d? | 2009-03-02 | 2009-03-23 | 6 |  |  | 38d |  |  |  |  |  |
| 13 | 1.2.1.1 | Implement RC1 items |  | 15d? | 2009-03-02 | 2009-03-20 | 6 |  |  | 38d | 0d | finish no earlier than 2009-03-20 |  |  |  |
| 14 | 1.2.1.2 | Verify RC1 items on DEV tier |  | 1d | 2009-03-23 | 2009-03-23 | 13 |  |  | 38d | 0d |  |  |  |  |
| 15 | 1.2.1.3 | Milestone: Deploy RC1 to QA | milestone | 0d | 2009-03-23 | 2009-03-23 | 14 |  |  | 38d | 0d |  |  |  |  |
| 16 | 1.2.2 | **IQA Testing** |  | 13d | 2009-03-24 | 2009-04-09 | 15 |  |  | 38d | 0d |  |  | 192h |  |
| 17 | 1.2.2.1 | 221RC1: Verify new items on QA |  | 5d | 2009-03-24 | 2009-03-30 | 15 |  |  | 38d | 0d |  | misquitt | 40h |  |
| 18 | 1.2.2.2 | 221RC1: Regression test on QA |  | 3d | 2009-03-24 | 2009-03-26 | 15 |  |  | 40d | 2d |  | khannave | 24h |  |
| 19 | 1.2.2.3 | Deployment test on QA-VM |  | 2d | 2009-03-24 | 2009-03-25 | 15 |  |  | 69d |  |  |  |  |  |
| 20 | 1.2.2.4 | Installer test |  | 3d | 2009-03-24 | 2009-03-26 | 15 |  |  | 43d | 0d |  | reddya2 | 24h |  |
| 21 | 1.2.2.5 | App scan on QA |  | 3d | 2009-03-31 | 2009-04-02 | 17, 18 |  |  | 38d | 0d |  | qabox | 24h |  |
| 22 | 1.2.2.6 | Deploy RC1 to STAGE |  | 2d | 2009-03-31 | 2009-04-01 | 17, 18 |  |  | 58d | 0d |  | stagebox | 16h |  |
| 23 | 1.2.2.7 | 221RC1: Verify new items on STAGE |  | 2d | 2009-04-02 | 2009-04-03 | 22 |  |  | 59d | 1d |  | misquitt | 16h |  |
| 24 | 1.2.2.8 | 221RC1: Regression test on STAGE |  | 3d | 2009-04-02 | 2009-04-06 | 22 |  |  | 58d | 0d |  | khannave | 24h |  |
| 25 | 1.2.2.9 | App scan on STAGE |  | 3d | 2009-04-07 | 2009-04-09 | 21, 23, 24 |  |  | 58d | 0d |  | stagebox | 24h |  |
| 26 | 1.2.2.10 | Milestone: Complete RC2 Testing | milestone | 0d | 2009-04-09 | 2009-04-09 | 25 |  |  | 58d |  |  |  |  |  |
| 27 | 1.2.3 | Milestone: Complete RC1 Construction | milestone | 0d | 2009-04-09 | 2009-04-09 | 15, 16 |  |  | 71d |  |  |  |  |  |

| ID | WBS | Task | Type | Duration | Start | Finish | Predecessors | Total slack | Free slack | Resources | Work |
| --- | --- | --- | --- | --- | --- | --- | --- | --- | --- | --- | --- |
| 28 | 1.3 | **Construction RC2** |  | 15d | 2009-04-03 | 2009-04-23 |  | 38d |  |  | 184h |
| 29 | 1.3.1 | **Implementation** |  | 4d | 2009-04-03 | 2009-04-08 |  | 38d |  |  |  |
| 30 | 1.3.1.1 | Implement RC2 items |  | 3d | 2009-04-03 | 2009-04-07 | 17, 18, 20, 21 | 38d | 0d |  |  |
| 31 | 1.3.1.2 | Verify RC2 items on DEV tier |  | 1d | 2009-04-08 | 2009-04-08 | 30 | 38d | 0d |  |  |
| 32 | 1.3.1.3 | Milestone: Deploy R2 to QA | milestone | 0d | 2009-04-08 | 2009-04-08 | 31 | 38d | 0d |  |  |
| 33 | 1.3.2 | **IQA Testing** |  | 11d | 2009-04-09 | 2009-04-23 | 32 | 38d |  |  | 184h |
| 34 | 1.3.2.1 | 221RC2: Verify defects on QA |  | 3d | 2009-04-09 | 2009-04-13 | 32 | 38d | 0d | misquitt | 24h |
| 35 | 1.3.2.2 | 221RC2: Regression test on QA |  | 3d | 2009-04-09 | 2009-04-13 | 32 | 38d | 0d | khannave | 24h |
| 36 | 1.3.2.3 | Deployment test on QA-VM |  | 2d | 2009-04-09 | 2009-04-10 | 32 | 57d |  |  |  |
| 37 | 1.3.2.4 | Installer test |  | 3d | 2009-04-09 | 2009-04-13 | 32 | 56d |  | reddya2 | 24h |
| 38 | 1.3.2.5 | App scan on QA |  | 3d | 2009-04-14 | 2009-04-16 | 34, 35 | 45d | 2d | qabox | 24h |
| 39 | 1.3.2.6 | Deploy RC2 to Stage |  | 2d | 2009-04-14 | 2009-04-15 | 34, 35 | 43d | 0d | stagebox | 16h |
| 40 | 1.3.2.7 | 221RC2: Verify defects on STAGE |  | 3d | 2009-04-16 | 2009-04-20 | 39 | 43d | 0d | misquitt | 24h |
| 41 | 1.3.2.8 | 221RC2: Regression test on STAGE |  | 3d | 2009-04-16 | 2009-04-20 | 39 | 43d | 0d | khannave | 24h |
| 42 | 1.3.2.9 | App scan on STAGE |  | 3d | 2009-04-21 | 2009-04-23 | 38, 40, 41 | 43d | 0d | stagebox | 24h |
| 43 | 1.3.2.10 | Milestone: Complete RC2 Testing | milestone | 0d | 2009-04-23 | 2009-04-23 | 42 | 43d | 0d |  |  |
| 44 | 1.3.3 | Milestone: Complete RC2 Construction | milestone | 0d | 2009-04-23 | 2009-04-23 | 43 | 43d | 0d |  |  |
| 45 | 1.4 | **Construction RC3** |  | 15d | 2009-04-14 | 2009-05-04 |  | 38d |  |  | 192h |
| 46 | 1.4.1 | **Implementation** |  | 4d | 2009-04-14 | 2009-04-17 |  | 38d |  |  |  |
| 47 | 1.4.1.1 | Implement RC3 items |  | 3d | 2009-04-14 | 2009-04-16 | 34, 35 | 51d | 0d |  |  |
| 48 | 1.4.1.2 | Verify RC3 items on DEV tier |  | 1d | 2009-04-17 | 2009-04-17 | 47 | 51d | 0d |  |  |
| 49 | 1.4.1.3 | Milestone: Deploy R3 to QA | milestone | 0d | 2009-04-17 | 2009-04-17 | 48 | 38d | 0d |  |  |
| 50 | 1.4.2 | **IQA Testing** |  | 11d | 2009-04-20 | 2009-05-04 | 49 | 38d |  |  | 192h |
| 51 | 1.4.2.1 | 221RC3: Verify defects on QA |  | 2d | 2009-04-20 | 2009-04-21 | 49 | 52d | 1d | misquitt | 16h |
| 52 | 1.4.2.2 | 221RC3: Regression test on QA |  | 3d | 2009-04-20 | 2009-04-22 | 49 | 51d | 0d | khannave | 24h |
| 53 | 1.4.2.3 | Deployment test on QA-VM |  | 2d | 2009-04-20 | 2009-04-21 | 49 | 63d |  |  |  |
| 54 | 1.4.2.4 | Installer test |  | 5d | 2009-04-20 | 2009-04-24 | 49 | 60d |  | reddya2 | 40h |
| 55 | 1.4.2.5 | App scan on QA |  | 3d | 2009-04-23 | 2009-04-27 | 51, 52 | 53d | 2d | qabox | 24h |
| 56 | 1.4.2.6 | Deploy RC3 to Stage |  | 2d | 2009-04-23 | 2009-04-24 | 51, 52 | 51d | 0d | stagebox | 16h |
| 57 | 1.4.2.7 | 221RC3: Verify defects on STAGE |  | 3d | 2009-04-27 | 2009-04-29 | 56 | 51d | 0d | misquitt | 24h |
| 58 | 1.4.2.8 | 221RC3: Regression test on STAGE |  | 3d | 2009-04-27 | 2009-04-29 | 56 | 51d | 0d | khannave | 24h |
| 59 | 1.4.2.9 | App scan on STAGE |  | 3d | 2009-04-30 | 2009-05-04 | 55, 57, 58 | 51d | 0d | stagebox | 24h |
| 60 | 1.4.2.10 | Milestone: Complete RC3 Testing | milestone | 0d | 2009-05-04 | 2009-05-04 | 59 | 51d | 0d |  |  |
| 61 | 1.4.3 | Milestone: Complete RC3 Construction | milestone | 0d | 2009-05-04 | 2009-05-04 | 60 | 51d | 0d |  |  |

| ID | WBS | Task | Type | Duration | Start | Finish | Predecessors | Complete | Remaining | Total slack | Free slack |
| --- | --- | --- | --- | --- | --- | --- | --- | --- | --- | --- | --- |
| 62 | 1.5 | **Transition** |  | 187d | 2008-10-13 A | 2009-06-30 |  | 30% | 131.56d | 0d |  |
| 63 | 1.5.1 | **CBIIT Deployment** |  | 3d | 2009-05-05 | 2009-05-07 |  |  |  | 38d |  |
| 64 | 1.5.1.1 | Deploy to PROD |  | 2d | 2009-05-05 | 2009-05-06 | 61 |  |  | 51d | 0d |
| 65 | 1.5.1.2 | Verify PROD deployment |  | 1d | 2009-05-07 | 2009-05-07 | 64 |  |  | 51d | 0d |
| 66 | 1.5.1.3 | Milestone: Complete PROD deployment | milestone | 0d | 2009-05-07 | 2009-05-07 | 65 |  |  | 38d | 0d |
| 67 | 1.5.2 | **All Release Artifacts** |  | 41d | 2009-03-05 | 2009-04-30 |  |  |  | 43d | 5d |
| 68 | 1.5.2.1 | **User's Guide** |  | 11d | 2009-03-05 | 2009-03-19 |  |  |  | 69d |  |
| 69 | 1.5.2.1.1 | Send changes to Jill |  | 1d | 2009-03-05 | 2009-03-05 | 8 |  |  | 82d | 0d |
| 70 | 1.5.2.1.2 | Update User's Guide |  | 5d | 2009-03-06 | 2009-03-12 | 69 |  |  | 82d | 0d |
| 71 | 1.5.2.1.3 | Revise User's Guide after review |  | 5d | 2009-03-13 | 2009-03-19 | 70 |  |  | 82d | 0d |
| 72 | 1.5.2.1.4 | Milestone: Complete User's Guide | milestone | 0d | 2009-03-19 | 2009-03-19 | 71 |  |  | 69d | 26d |
| 73 | 1.5.2.2 | **Installation Guide** |  | 7d | 2009-03-27 | 2009-04-06 |  |  |  | 57d |  |
| 74 | 1.5.2.2.1 | Send changes to Jill |  | 1d | 2009-03-27 | 2009-03-27 | 20 |  |  | 70d | 0d |
| 75 | 1.5.2.2.2 | Update Installation Guide |  | 3d | 2009-03-30 | 2009-04-01 | 74 |  |  | 70d | 0d |
| 76 | 1.5.2.2.3 | Revise Installation Guide after review |  | 3d | 2009-04-02 | 2009-04-06 | 75 |  |  | 70d | 0d |
| 77 | 1.5.2.2.4 | Milestone: Complete Installation Guide | milestone | 0d | 2009-04-06 | 2009-04-06 | 76 |  |  | 57d | 14d |
| 78 | 1.5.2.3 | **Other Release Artifacts** |  | 9d | 2009-04-14 | 2009-04-24 |  |  |  | 43d |  |
| 79 | 1.5.2.3.1 | Prepare Release Notes |  | 1d | 2009-04-14 | 2009-04-14 | 34 |  |  | 64d | 8d |
| 80 | 1.5.2.3.2 | Prepare Client Libraries and javadoc |  | 1d | 2009-04-24 | 2009-04-24 | 44 |  |  | 56d | 0d |
| 81 | 1.5.2.3.3 | Prepare installer packages |  | 1d | 2009-04-24 | 2009-04-24 | 44 |  |  | 56d | 0d |
| 82 | 1.5.2.3.4 | Milestone: Complete other release artifacts | milestone | 0d | 2009-04-24 | 2009-04-24 | 79, 80, 81 |  |  | 43d | 0d |
| 83 | 1.5.2.4 | **Update sites and Announce release** |  | 4d | 2009-04-27 | 2009-04-30 | 72, 77, 82 |  |  | 43d |  |
| 84 | 1.5.2.4.1 | Update caArray Gforge site |  | 1d | 2009-04-27 | 2009-04-27 |  |  |  | 59d |  |
| 85 | 1.5.2.4.2 | Update Download Centre page |  | 4d | 2009-04-27 | 2009-04-30 |  |  |  | 56d |  |
| 86 | 1.5.2.4.3 | Update Tools page |  | 1d | 2009-04-27 | 2009-04-27 |  |  |  | 59d |  |
| 87 | 1.5.2.4.4 | Update Landing site |  | 1d | 2009-04-27 | 2009-04-27 |  |  |  | 59d |  |
| 88 | 1.5.2.4.5 | Update LSD Gforge site |  | 1d | 2009-04-27 | 2009-04-27 |  |  |  | 59d |  |
| 89 | 1.5.3 | caArray 2.20 Closeout | milestone | 0d | 2009-05-07 | 2009-05-07 | 67, 66 |  |  | 38d |  |
| 90 | 1.5.4 | caarray_schedule_2_3_0 |  | 187d | 2008-10-13 A | 2009-06-30 |  | 35% | 122.07d | 0d |  |
