# caarray_schedule_2_3_0

Schedule from MS Project, 2008-10-13 to 2009-06-30, A marks actual dates.
5AM Solutions, Inc.

## Calendars

- Standard: Mon-Fri 08:00-12:00, 13:00-17:00; Sat-Sun off.

## Resources

| Resource |
| --- |
| rsrinivasa |
| misquitt |
| khannave |
| dba |
| webapp |
| security |
| qavmbox |
| stagebox |
| reddya |

## Schedule

| ID | WBS | Task | Type | Duration | Start | Finish | Predecessors | Complete | Remaining | Total slack | Constraint | Resources | Work | Actual work |
| --- | --- | --- | --- | --- | --- | --- | --- | --- | --- | --- | --- | --- | --- | --- |
| 1 | 1 | **caArray 2.3.0** |  | 187d | 2008-10-13 A | 2009-06-30 |  | 42% | 108.26d | 0d |  |  | 1760h | 344h |
| 2 | 1.1 | **Inception and Elaboration** |  | 43d | 2008-10-13 A | 2008-12-10 A |  | 100% |  |  |  |  | 344h | 344h |
| 3 | 1.1.1 | Milestone: Begin Inception and Elaboration | milestone | 0d | 2008-10-13 A | 2008-10-13 A |  | 100% |  |  |  |  |  |  |
| 4 | 1.1.2 | **Requirements analysis** |  | 43d | 2008-10-13 A | 2008-12-10 A |  | 100% |  |  |  | rsrinivasa | 344h | 344h |
| 5 | 1.1.2.1 | Use cases |  | 15d | 2008-10-13 A | 2008-10-31 A |  | 100% |  |  |  |  |  |  |
| 6 | 1.1.2.2 | Design new service model and API |  | 15d | 2008-11-03 A | 2008-11-24 A | 5 | 100% |  |  |  |  |  |  |
| 7 | 1.1.2.3 | Internal and external reviews of new service model/API |  | 10d | 2008-11-25 A | 2008-12-10 A | 6 | 100% |  |  |  |  |  |  |
| 8 | 1.1.3 | **Project Management** |  | 43d | 2008-10-13 A | 2008-12-10 A |  | 100% |  |  |  |  |  |  |
| 9 | 1.1.3.1 | Define scope |  | 40d | 2008-10-13 A | 2008-12-10 A |  | 100% |  |  |  |  |  |  |
| 10 | 1.1.3.2 | Estimate LOEs |  | 40d | 2008-10-13 A | 2008-12-10 A |  | 100% |  |  |  |  |  |  |
| 11 | 1.1.4 | Milestone: Complete Inception and Elaboration | milestone | 0d | 2008-12-10 A | 2008-12-10 A | 4, 9, 10 | 100% |  |  |  |  |  |  |
| 12 | 1.2 | **Construction Alpha1** |  | 41d | 2008-12-10 A | 2009-02-05 A |  | 100% |  |  |  |  |  |  |
| 13 | 1.2.1 | Milestone: Begin Alpha1 Construction | milestone | 0d | 2008-12-10 A | 2008-12-10 A | 4 | 100% |  |  |  |  |  |  |
| 14 | 1.2.2 | **Implementation** |  | 35d | 2008-12-16 A | 2009-02-02 A |  | 100% |  |  |  |  |  |  |
| 15 | 1.2.2.1 | Implement Alpha1 items |  | 22d | 2008-12-16 A | 2009-01-28 A | 13 | 100% |  |  | finish no earlier than 2009-01-28 |  |  |  |
| 16 | 1.2.2.2 | Verify Alpha1 items on DEV tier |  | 1d | 2009-01-29 A | 2009-01-29 A | 15 | 100% |  |  |  |  |  |  |
| 17 | 1.2.2.3 | Milestone: Deploy Alpha1 to QA | milestone | 1d | 2009-02-02 A | 2009-02-02 A |  | 100% |  |  | start no earlier than 2009-02-02 |  |  |  |
| 18 | 1.2.3 | **QA Testing** |  | 3d | 2009-02-02 A | 2009-02-05 A | 17 | 100% |  |  |  |  |  |  |
| 19 | 1.2.3.1 | 230A1:Verify new items on QA |  | 3d | 2009-02-03 A | 2009-02-05 A |  | 100% |  |  |  |  |  |  |
| 20 | 1.2.3.2 | 230A1:Regression test on QA |  | 3d | 2009-02-03 A | 2009-02-05 A |  | 100% |  |  |  |  |  |  |
| 21 | 1.2.3.3 | Milestone: Complete Alpha1 QA testing | milestone | 0d | 2009-02-02 A | 2009-02-02 A |  | 100% |  |  |  |  |  |  |
| 22 | 1.2.4 | Milestone: Complete Alpha1 Construction | milestone | 0d | 2009-02-02 A | 2009-02-02 A | 21 | 100% |  |  |  |  |  |  |
| 23 | 1.3 | **Construction Alpha2** |  | 32d | 2009-02-02 A | 2009-03-18 |  | 58% | 13.42d | 74d |  |  | 184h |  |
| 24 | 1.3.1 | Milestone: Begin Alpha2 Construction | milestone | 0d | 2009-02-02 A | 2009-02-02 A | 17 | 100% |  |  |  |  |  |  |

| ID | WBS | Task | Type | Duration | Start | Finish | Predecessors | Complete | Total slack | Free slack | Constraint | Resources | Work |
| --- | --- | --- | --- | --- | --- | --- | --- | --- | --- | --- | --- | --- | --- |
| 25 | 1.3.2 | **Implementation** |  | 18d | 2009-02-09 A | 2009-03-04 A |  | 100% |  |  |  |  |  |
| 26 | 1.3.2.1 | Implement Alpha2 items |  | 17d | 2009-02-09 A | 2009-03-03 A | 24 | 100% |  |  | finish no earlier than 2009-03-03 |  |  |
| 27 | 1.3.2.2 | Verify Alpha2 items on DEV tier |  | 1d | 2009-03-04 A | 2009-03-04 A | 26 | 100% |  |  |  |  |  |
| 28 | 1.3.2.3 | Milestone: Deploy Alpha2 to QA | milestone | 0d | 2009-03-04 A | 2009-03-04 A | 27 | 100% |  |  |  |  |  |
| 29 | 1.3.3 | **QA Testing** |  | 10d | 2009-03-04 | 2009-03-18 | 28 |  | 74d |  |  |  | 184h |
| 30 | 1.3.3.1 | 230A2:Verify new items on QA |  | 10d | 2009-03-05 | 2009-03-18 | 28 |  | 74d |  | finish no earlier than 2009-03-13 | misquitt; reddya | 160h |
| 31 | 1.3.3.2 | 230A2:Regression test on QA |  | 3d | 2009-03-05 | 2009-03-09 | 28 |  | 29d |  |  | khannave | 24h |
| 32 | 1.3.3.3 | Milestone: Complete Alpha2 QA testing | milestone | 0d | 2009-03-04 | 2009-03-04 |  |  | 84d | 0d |  |  |  |
| 33 | 1.3.4 | Milestone: Complete Alpha2 Construction | milestone | 0d | 2009-03-04 | 2009-03-04 | 32 |  | 84d |  |  |  |  |
| 34 | 1.4 | **Construction RC1** |  | 48d | 2009-03-04 | 2009-05-11 |  |  | 0d |  |  |  | 560h |
| 35 | 1.4.1 | Milestone: Begin RC1 Construction | milestone | 0d | 2009-03-04 | 2009-03-04 | 28 |  | 0d |  |  |  |  |
| 36 | 1.4.2 | **Implementation** |  | 22d | 2009-03-05 | 2009-04-03 |  |  | 0d |  |  |  |  |
| 37 | 1.4.2.1 | Implement RC1 items |  | 20d | 2009-03-05 | 2009-04-01 | 35 |  | 0d |  |  |  |  |
| 38 | 1.4.2.2 | Verify RC1 items on DEV tier |  | 1d | 2009-04-02 | 2009-04-02 | 37 |  | 0d |  |  |  |  |
| 39 | 1.4.2.3 | Milestone: Deploy RC1 to QA | milestone | 1d | 2009-04-03 | 2009-04-03 | 38 |  | 0d |  |  |  |  |
| 40 | 1.4.3 | **QA Testing** |  | 26d | 2009-04-06 | 2009-05-11 | 39 |  | 0d |  |  |  | 560h |
| 41 | 1.4.3.1 | 230RC1: Verify new items on QA |  | 15d | 2009-04-06 | 2009-04-24 | 39 |  | 0d |  |  | misquitt; reddya | 240h |
| 42 | 1.4.3.2 | 230RC1: Regression test on QA |  | 3d | 2009-04-06 | 2009-04-08 |  |  | 12d | 0d |  | khannave | 24h |
| 43 | 1.4.3.3 | Deployment test on QA-VM |  | 3d | 2009-04-09 | 2009-04-13 | 42 |  | 56d |  |  | qavmbox; webapp; dba | 72h |
| 44 | 1.4.3.4 | Deploy RC1 to STAGE |  | 1d | 2009-04-27 | 2009-04-27 | 41, 42 |  | 0d |  |  | webapp; stagebox | 16h |
| 45 | 1.4.3.5 | 230RC1: Verify new items on STAGE |  | 7d | 2009-04-28 | 2009-05-06 | 44 |  | 0d |  |  | misquitt | 56h |
| 46 | 1.4.3.6 | 230RC1: Regression test on STAGE |  | 3d | 2009-04-28 | 2009-04-30 | 44 |  | 9d | 0d |  | khannave | 24h |
| 47 | 1.4.3.7 | Installer testing |  | 10d | 2009-04-06 | 2009-04-17 |  |  | 52d |  |  | reddya | 80h |
| 48 | 1.4.3.8 | App scan on STAGE |  | 3d | 2009-05-07 | 2009-05-11 | 44, 45, 46 |  | 36d |  |  | stagebox; security | 48h |
| 49 | 1.4.3.9 | Milestone: Complete RC1 QA testing | milestone | 0d | 2009-04-27 | 2009-04-27 | 44 |  | 46d | 0d |  |  |  |
| 50 | 1.4.4 | Milestone: Complete RC1 Construction | milestone | 0d | 2009-04-27 | 2009-04-27 | 49 |  | 46d |  |  |  |  |

| ID | WBS | Task | Type | Duration | Start | Finish | Predecessors | Total slack | Free slack | Resources | Work |
| --- | --- | --- | --- | --- | --- | --- | --- | --- | --- | --- | --- |
| 51 | 1.5 | **Construction RC2** |  | 39d | 2009-04-03 | 2009-05-28 |  | 11d |  |  | 312h |
| 52 | 1.5.1 | Milestone: Begin RC2 Construction | milestone | 0d | 2009-04-03 | 2009-04-03 | 39 | 29d | 0d |  |  |
| 53 | 1.5.2 | **Implementation** |  | 12d | 2009-04-06 | 2009-04-21 |  | 11d |  |  |  |
| 54 | 1.5.2.1 | Implement RC2 items |  | 10d | 2009-04-06 | 2009-04-17 | 52 | 29d | 0d |  |  |
| 55 | 1.5.2.2 | Verify RC2 items on DEV tier |  | 1d | 2009-04-20 | 2009-04-20 | 54 | 29d | 0d |  |  |
| 56 | 1.5.2.3 | Milestone: Deploy RC2 to QA | milestone | 1d | 2009-04-21 | 2009-04-21 | 55 | 29d | 0d |  |  |
| 57 | 1.5.3 | **QA Testing** |  | 27d | 2009-04-22 | 2009-05-28 | 56 | 11d |  |  | 312h |
| 58 | 1.5.3.1 | 230RC2: Verify new items on QA |  | 8d | 2009-05-07 | 2009-05-18 | 56, 45 | 0d |  | misquitt | 64h |
| 59 | 1.5.3.2 | 230RC2: Regression test on QA |  | 3d | 2009-05-01 | 2009-05-05 | 56, 46 | 9d |  | khannave | 24h |
| 60 | 1.5.3.3 | Deploy RC2 to STAGE |  | 1d | 2009-05-19 | 2009-05-19 | 58, 59 | 0d |  | stagebox; webapp | 16h |
| 61 | 1.5.3.4 | 230RC2: Verify new items on STAGE |  | 7d | 2009-05-20 | 2009-05-28 | 60 | 0d |  | misquitt | 56h |
| 62 | 1.5.3.5 | 230RC2: Regression test on STAGE |  | 3d | 2009-05-20 | 2009-05-22 | 60 | 6d | 0d | khannave | 24h |
| 63 | 1.5.3.6 | Installer testing |  | 10d | 2009-04-22 | 2009-05-05 | 56 | 58d | 35d | reddya | 80h |
| 64 | 1.5.3.7 | App scan on STAGE |  | 3d | 2009-05-20 | 2009-05-22 | 60 | 27d | 4d | stagebox; security | 48h |
| 65 | 1.5.3.8 | Milestone: Complete RC2 QA testing | milestone | 0d | 2009-05-28 | 2009-05-28 | 61, 62, 64, 63 | 23d | 0d |  |  |
| 66 | 1.5.4 | Milestone: Complete RC2 Construction | milestone | 0d | 2009-05-28 | 2009-05-28 | 65 | 23d |  |  |  |
| 67 | 1.6 | **Construction RC3** |  | 45d | 2009-04-21 | 2009-06-23 |  | 5d |  |  | 360h |
| 68 | 1.6.1 | Milestone: Begin RC3 Construction | milestone | 0d | 2009-04-21 | 2009-04-21 | 56 | 35d | 0d |  |  |
| 69 | 1.6.2 | **Implementation** |  | 10d | 2009-04-22 | 2009-05-05 |  | 17d |  |  |  |
| 70 | 1.6.2.1 | Implement RC3 items |  | 8d | 2009-04-22 | 2009-05-01 | 68 | 35d | 0d |  |  |
| 71 | 1.6.2.2 | Verify RC3 items on DEV tier |  | 1d | 2009-05-04 | 2009-05-04 | 70 | 35d | 0d |  |  |
| 72 | 1.6.2.3 | Milestone: Deploy RC3 to QA | milestone | 1d | 2009-05-05 | 2009-05-05 | 71 | 35d | 0d |  |  |
| 73 | 1.6.3 | **QA Testing** |  | 35d | 2009-05-06 | 2009-06-23 | 72 | 5d |  |  | 360h |
| 74 | 1.6.3.1 | 230RC3: Verify new items on QA |  | 5d | 2009-05-29 | 2009-06-04 | 72, 61 | 0d |  | misquitt | 40h |
| 75 | 1.6.3.2 | 230RC3: Regression test on QA |  | 3d | 2009-05-25 | 2009-05-27 | 72, 62 | 6d | 0d | khannave | 24h |
| 76 | 1.6.3.3 | Deployment test on QA-VM |  | 5d | 2009-05-28 | 2009-06-03 | 75 | 19d |  | stagebox; webapp | 80h |
| 77 | 1.6.3.4 | Deploy RC3 to STAGE |  | 1d | 2009-06-05 | 2009-06-05 | 74, 75 | 0d |  | misquitt | 8h |
| 78 | 1.6.3.5 | 230RC3: Verify new items on STAGE |  | 7d | 2009-06-11 | 2009-06-19 | 77, 80 | 0d |  | khannave | 56h |
| 79 | 1.6.3.6 | 230RC3: Regression test on STAGE |  | 3d | 2009-06-11 | 2009-06-15 | 77, 80 | 4d |  | reddya | 24h |
| 80 | 1.6.3.7 | App scan on STAGE |  | 3d | 2009-06-08 | 2009-06-10 | 77 | 0d |  | stagebox; security | 48h |
| 81 | 1.6.3.8 | Installer testing |  | 8d | 2009-05-06 | 2009-05-15 |  | 25d |  | reddya | 64h |
| 82 | 1.6.3.9 | LSD compliance testing |  | 2d | 2009-06-22 | 2009-06-23 | 81, 78, 79 | 0d |  | reddya | 16h |
| 83 | 1.6.3.10 | Milestone: Complete RC3 QA testing | milestone | 0d | 2009-06-23 | 2009-06-23 | 78, 79, 82 | 0d |  |  |  |
| 84 | 1.6.4 | Milestone: Complete RC3 Construction | milestone | 0d | 2009-06-23 | 2009-06-23 | 83 | 2d | 0d |  |  |

| ID | WBS | Task | Type | Duration | Start | Finish | Predecessors | Total slack | Free slack |
| --- | --- | --- | --- | --- | --- | --- | --- | --- | --- |
| 85 | 1.7 | **Transition** |  | 62d | 2009-04-06 | 2009-06-30 |  | 0d |  |
| 86 | 1.7.1 | **CBIIT Deployment** |  | 3d | 2009-06-24 | 2009-06-26 | 84 | 2d |  |
| 87 | 1.7.1.1 | Deploy to PROD |  | 2d | 2009-06-24 | 2009-06-25 |  | 2d | 0d |
| 88 | 1.7.1.2 | Verify PROD deployment |  | 1d | 2009-06-26 | 2009-06-26 | 87 | 2d | 0d |
| 89 | 1.7.1.3 | Milestone: Complete PROD deployment | milestone | 0d | 2009-06-26 | 2009-06-26 | 88 | 2d |  |
| 90 | 1.7.2 | **All Release Artifacts** |  | 62d | 2009-04-06 | 2009-06-30 |  | 0d |  |
| 91 | 1.7.2.1 | **User's Guide** |  | 21d | 2009-04-06 | 2009-05-04 |  | 37d |  |
| 92 | 1.7.2.1.1 | Send changes to Jill |  | 1d | 2009-04-06 | 2009-04-06 | 39 | 55d | 0d |
| 93 | 1.7.2.1.2 | Update User's Guide |  | 15d | 2009-04-07 | 2009-04-27 | 92 | 55d | 0d |
| 94 | 1.7.2.1.3 | Revise User's Guide after review |  | 5d | 2009-04-28 | 2009-05-04 | 93 | 55d | 0d |
| 95 | 1.7.2.1.4 | Milestone: Complete User's Guide | milestone | 0d | 2009-05-04 | 2009-05-04 | 94 | 37d |  |
| 96 | 1.7.2.2 | **Installation Guide** |  | 22d | 2009-04-22 | 2009-05-21 |  | 24d |  |
| 97 | 1.7.2.2.1 | Update BDA wiki page with installer properties |  | 1d | 2009-04-22 | 2009-04-22 | 56 | 42d | 0d |
| 98 | 1.7.2.2.2 | Send changes to Jill |  | 1d | 2009-04-23 | 2009-04-23 | 97 | 42d | 0d |
| 99 | 1.7.2.2.3 | Update Installation Guide |  | 15d | 2009-04-24 | 2009-05-14 | 98 | 42d | 0d |
| 100 | 1.7.2.2.4 | Revise Installation Guide after review |  | 5d | 2009-05-15 | 2009-05-21 | 99 | 42d | 0d |
| 101 | 1.7.2.2.5 | Milestone: Complete Installation Guide | milestone | 0d | 2009-05-21 | 2009-05-21 | 100 | 24d |  |
| 102 | 1.7.2.3 | **Other Release Artifacts** |  | 1d | 2009-06-24 | 2009-06-24 | 83 | 0d |  |
| 103 | 1.7.2.3.1 | Prepare Release Notes |  | 1d | 2009-06-24 | 2009-06-24 |  | 0d |  |
| 104 | 1.7.2.3.2 | Prepare Client Libraries and javadoc |  | 1d | 2009-06-24 | 2009-06-24 |  | 0d |  |
| 105 | 1.7.2.3.3 | Prepare installer packages |  | 1d | 2009-06-24 | 2009-06-24 |  | 0d |  |
| 106 | 1.7.2.3.4 | Milestone: Complete other release artifacts | milestone | 0d | 2009-06-24 | 2009-06-24 | 103, 104, 105 | 0d |  |
| 107 | 1.7.2.4 | **Update sites and Announce release** |  | 4d | 2009-06-25 | 2009-06-30 | 101, 95, 106 | 0d |  |
| 108 | 1.7.2.4.1 | Update caArray Gforge site |  | 1d | 2009-06-25 | 2009-06-25 |  | 3d |  |
| 109 | 1.7.2.4.2 | Update Download Centre page |  | 4d | 2009-06-25 | 2009-06-30 |  | 0d |  |
| 110 | 1.7.2.4.3 | Update Tools page |  | 1d | 2009-06-25 | 2009-06-25 |  | 3d |  |
| 111 | 1.7.2.4.4 | Update Landing site |  | 1d | 2009-06-25 | 2009-06-25 |  | 3d |  |
| 112 | 1.7.2.4.5 | Update LSD Gforge site |  | 1d | 2009-06-25 | 2009-06-25 |  | 3d |  |
| 113 | 2 | caArray 2.3.0 Closeout | milestone | 0d | 2009-06-30 | 2009-06-30 | 90, 89 | 0d |  |
