# inception_iteration

Schedule from MS Project, 2007-04-02 to 2007-05-14, A marks actual dates.
Rational Software Corporation

## Calendars

- Standard: Mon-Sun 08:00-12:00, 13:00-17:00.

## Resources

| Resource |
| --- |
| etavela |
| smatyas |
| bgendleman |
| rdaly |
| jpike |
| rsrinavasa |

## Schedule

| ID | WBS | Task | Type | Duration | Start | Finish | Predecessors | Complete | Remaining | Total slack | Free slack | Constraint |
| --- | --- | --- | --- | --- | --- | --- | --- | --- | --- | --- | --- | --- |
| 1 | 1 | **Inception Iteration 1** |  | 43d | 2007-04-02 A | 2007-05-14 |  | 2% | 42.09d | 0d |  |  |
| 2 | 1 | **Project Management** |  | 33d | 2007-04-02 | 2007-05-04 |  |  |  | 0d |  |  |
| 3 | 1.1 | Plan the project |  | 30d | 2007-04-02 | 2007-05-01 |  |  |  | 0d |  | start no earlier than 2007-04-02 |
| 4 | 1.2 | Evaluate Project Scope and Risk |  | 1d | 2007-05-02 | 2007-05-02 | 3 |  |  | 0d |  |  |
| 5 | 1.3 | Plan the Project |  | 1d | 2007-05-03 | 2007-05-03 | 4, 12SS |  |  | 0d |  |  |
| 6 | 1.4 | Plan Remainder of Initial Iteration |  | 1d | 2007-05-04 | 2007-05-04 | 5 |  |  | 0d |  |  |
| 7 | 1.8 | Plan for Next Iteration |  | 1d | 2007-04-02 | 2007-04-02 | 8FF |  |  | 41d |  |  |
| 8 | 1.9 | Refine Software Development Plan |  | 1d | 2007-04-02 | 2007-04-02 |  |  |  | 41d | 0d |  |
| 9 | 3 | **Requirements** |  | 33d | 2007-04-02 A | 2007-05-04 |  | 13% | 28.6d | 10d |  |  |
| 10 | 3.1 | Define the Preliminary Vision |  | 5d | 2007-04-02 | 2007-04-06 | 3SS, 11FF |  |  | 38d | 23d | start no earlier than 1999-05-04 |
| 11 | 3.2 | Elicit Stakeholder Needs |  | 3d | 2007-04-02 | 2007-04-04 | 3SS |  |  | 40d | 2d | start no earlier than 1999-05-04 |
| 12 | 3.3 | Identify and Describe Use Cases |  | 3d | 2007-04-06 | 2007-04-08 |  |  |  | 27d | 1d | start no earlier than 2007-04-06 |
| 13 | 3.4 | Manage the Scope of the System |  | 2d | 2007-04-08 | 2007-04-09 | 12SS+1d |  |  | 35d | 25d | start no earlier than 2007-04-08 |
| 14 | 3.5 | Refine the System Definition | milestone | 0d | 2007-05-04 | 2007-05-04 | 6, 13, 12 |  |  | 10d |  | start no earlier than 2007-04-18 |
| 15 | 3.6 | Manage Changing Requirements |  | 2d | 2007-04-25 A | 2007-04-26 A | 10SS | 100% |  |  |  | start no earlier than 2007-04-25 |
| 16 | 4 | **Analysis and Design** |  | 5d | 2007-05-05 | 2007-05-09 |  |  |  | 5d |  |  |
| 17 | 4.1 | Perform Architectural Synthesis |  | 5d | 2007-05-05 | 2007-05-09 | 6 |  |  | 5d |  |  |
| 18 | 5 | **Test** |  | 1d | 2007-05-03 | 2007-05-03 |  |  |  | 11d |  |  |
| 19 | 5.1 | Define Evaluation Mission |  | 1d | 2007-05-03 | 2007-05-03 | 5SS |  |  | 11d |  |  |
| 20 | 6 | **Environment** |  | 13d | 2007-05-02 | 2007-05-14 |  |  |  | 0d |  |  |
| 21 | 6.1 | Prepare Environment for Project |  | 2d | 2007-05-02 | 2007-05-03 | 3 |  |  | 0d |  |  |
| 22 | 6.2 | Prepare Environment for an Iteration |  | 1d | 2007-05-04 | 2007-05-04 | 21, 6SS |  |  | 0d |  |  |
| 23 | 6.4 | Support Environment During an Iteration |  | 10d | 2007-05-05 | 2007-05-14 | 22 |  |  | 0d |  |  |
| 24 | 7 | **Configuration & Change Management** |  | 9d | 2007-05-02 | 2007-05-10 |  |  |  | 4d |  |  |
| 25 | 7.1 | Plan Project Configuration and Change Control |  | 1d | 2007-05-02 | 2007-05-02 | 3 |  |  | 5d | 1d |  |
| 26 | 7.2 | Create Project CM Environments |  | 1d | 2007-05-04 | 2007-05-04 | 25, 6SS |  |  | 4d | 0d |  |
| 27 | 7.3 | Change and Deliver Configuration Items |  | 6d | 2007-05-05 | 2007-05-10 | 26 |  |  | 4d |  |  |
| 28 | 7.4 | Manage Baselines and Releases |  | 6d | 2007-05-05 | 2007-05-10 | 26 |  |  | 4d |  |  |
| 29 | 7.5 | Manage Change Requests |  | 6d | 2007-05-05 | 2007-05-10 | 26 |  |  | 4d |  |  |
| 30 | 7.6 | Monitor and Report Configuration Status |  | 6d | 2007-05-05 | 2007-05-10 | 26 |  |  | 4d |  |  |
| 31 | 1.7 | Inception Complete | milestone | 0d | 2007-05-04 | 2007-05-04 | 2, 3 |  |  | 10d |  |  |
| 32 | 2 | Elaboration - Iteration 2 |  | 1d? | 2007-04-02 | 2007-04-02 |  |  |  | 42d |  |  |
| 33 | 3 | Elaboration - Iteration 3 |  | 1d? | 2007-04-02 | 2007-04-02 |  |  |  | 42d |  |  |
| 34 | 4 | Construction - Iteration 4 |  | 1d? | 2007-04-02 | 2007-04-02 |  |  |  | 42d |  |  |
| 35 | 5 | Construction - Iteration 5 | milestone | 1d? | 2007-04-02 | 2007-04-02 |  |  |  | 42d |  |  |
| 36 | 6 | Transition - Iteration 6 | milestone | 1d? | 2007-04-02 | 2007-04-02 |  |  |  | 42d |  |  |
